# 餐谋长时间规划

Schedule from MS Project, 2020-04-01 to 2020-07-30, costs in ¥.
Microsoft

## Calendars

- 标准: Mon-Fri 08:00-12:00, 13:00-17:00; Sat-Sun off.

## Resources

| Resource |
| --- |
| 项目经理 |
| 产品经理 |
| 技术专家 |
| UI专家 |
| 测试员 |
| 程序员1 |
| 程序员2 |
| 程序员3 |

## Schedule

| ID | WBS | Task | Type | Duration | Start | Finish | Predecessors | Total slack | Free slack | Constraint | Resources | Work | Cost |
| --- | --- | --- | --- | --- | --- | --- | --- | --- | --- | --- | --- | --- | --- |
| 1 | 1 | **启动** |  | 7d | 2020-04-01 | 2020-04-10 |  |  |  |  |  | 128h | 5,280 |
| 2 | 1.1 | 组建核心团队 |  | 2d? | 2020-04-01 | 2020-04-03 |  | -1.88d | 0d |  | 项目经理; 产品经理; 技术专家; UI专家; 测试员; 程序员3 | 56h | 2,080 |
| 3 | 1.2 | 干系人分析 |  | 1d? | 2020-04-01 | 2020-04-02 |  | -0.88d | 0d |  | 项目经理; 产品经理 | 16h | 800 |
| 4 | 1.3 | 里程碑计划 |  | 1d? | 2020-04-03 | 2020-04-06 |  | -2.88d | 0d |  | 项目经理 | 8h | 400 |
| 5 | 1.4 | 制定项目章程 |  | 1d? | 2020-04-06 | 2020-04-07 | 2, 3, 4 | -2.88d | 0d |  | 项目经理 | 8h | 400 |
| 6 | 1.5 | 项目启动大会 |  | 1.88d? | 2020-04-07 | 2020-04-08 | 5 | -2.88d | 0d |  | UI专家; 测试员; 产品经理; 技术专家; 项目经理 | 40h | 1,600 |
| 7 | 2 | **规划** |  | 28.88d? | 2020-04-06 | 2020-05-14 |  | 0d |  |  |  | 205h | 9,910 |
| 8 | 2.1 | **规划范围** |  | 3d | 2020-04-11 | 2020-04-15 |  |  |  |  |  | 14h | 680 |
| 9 | 2.1.1 | 制定需求说明书 | manual | 1d | 2020-04-06 | 2020-04-07 | 6 |  |  |  | 产品经理 | 8h | 400 |
| 10 | 2.1.2 | 界面设计 | manual | 0.12d | 2020-04-07 | 2020-04-08 | 9 |  |  |  | UI专家 | 1h | 30 |
| 11 | 2.1.3 | 详细设计说明书 | manual | 0.12d | 2020-04-07 | 2020-04-08 | 9 |  |  |  | 项目经理 | 1h | 50 |
| 12 | 2.1.4 | 范围说明书 | manual | 0.12d | 2020-04-07 | 2020-04-08 | 9 |  |  |  | 项目经理 | 1h | 50 |
| 13 | 2.1.5 | 创建WBS | manual | 0.12d | 2020-04-08 | 2020-04-09 | 10, 11, 12 |  |  |  | 项目经理 | 1h | 50 |
| 14 | 2.1.6 | 形成范围基准 | manual | 0.12d | 2020-04-09 | 2020-04-10 | 13 |  |  |  | 产品经理; 项目经理 | 2h | 100 |
| 15 | 2.2 | **规划时间** |  | 11d | 2020-04-10 | 2020-04-24 |  |  |  |  |  | 72h | 3,600 |
| 16 | 2.2.1 | 排列工作包顺序 | manual | 3d | 2020-04-10 | 2020-04-16 | 14 |  |  | start no earlier than 2020-04-10 | 项目经理 | 24h | 1,200 |
| 17 | 2.2.2 | 估算资源 | manual | 3d | 2020-04-16 | 2020-04-21 | 16 |  |  | start no earlier than 2020-04-16 | 项目经理 | 24h | 1,200 |
| 18 | 2.2.3 | 估算项目持续时间 | manual | 1d | 2020-04-21 | 2020-04-22 | 17 |  |  |  | 项目经理 | 8h | 400 |
| 19 | 2.2.4 | 制定进度计划 | manual | 1d | 2020-04-22 | 2020-04-23 | 18 |  |  |  | 项目经理 | 8h | 400 |
| 20 | 2.2.5 | 形成进度基准 | manual | 1d | 2020-04-23 | 2020-04-24 | 19 |  |  |  | 项目经理 | 8h | 400 |
| 21 | 2.3 | **规划成本** |  | 6d | 2020-04-24 | 2020-05-04 |  |  |  |  |  | 31h | 1,550 |
| 22 | 2.3.1 | 项目成本估算 | manual | 0.88d | 2020-04-24 | 2020-04-27 | 20 |  |  |  | 项目经理 | 7h | 350 |
| 23 | 2.3.2 | 项目预算 | manual | 3d | 2020-04-28 | 2020-04-30 | 22 |  |  |  | 项目经理 | 24h | 1,200 |
| 24 | 2.4 | **规划质量** |  | 1d | 2020-04-16 | 2020-04-17 |  |  |  |  |  | 16h | 480 |
| 25 | 2.4.1 | 制定测试计划 | manual | 1d | 2020-04-10 | 2020-04-13 | 14 |  |  |  | 测试员 | 8h | 240 |
| 26 | 2.4.2 | 制定测试用例 | manual | 1d | 2020-04-13 | 2020-04-14 | 25 |  |  |  | 测试员 | 8h | 240 |

| ID | WBS | Task | Type | Duration | Start | Finish | Predecessors | Resources | Work | Cost |
| --- | --- | --- | --- | --- | --- | --- | --- | --- | --- | --- |
| 27 | 2.5 | **规划人力资源** |  | 3d | 2020-05-04 | 2020-05-07 |  |  | 32h | 1,600 |
| 28 | 2.5.1 | 制定人力资源计划 | manual | 1d | 2020-05-04 | 2020-05-05 | 17 | 产品经理; 项目经理 | 16h | 800 |
| 29 | 2.5.2 | 制定人员安排 | manual | 1d | 2020-05-06 | 2020-05-07 | 28 | 产品经理; 项目经理 | 16h | 800 |
| 30 | 2.6 | **规划沟通** |  | 2d | 2020-05-07 | 2020-05-08 |  |  | 8h | 400 |
| 31 | 2.6.1 | 制定沟通计划 | manual | 1d | 2020-05-07 | 2020-05-08 | 29 | 项目经理 | 8h | 400 |
| 32 | 2.7 | **规划风险** |  | 5d | 2020-05-08 | 2020-05-14 |  |  | 24h | 1,200 |
| 33 | 2.7.1 | 制定风险分析 | manual | 1d | 2020-05-08 | 2020-05-11 | 31 | 项目经理 | 8h | 400 |
| 34 | 2.7.2 | 制定风险登记册 | manual | 1d | 2020-05-11 | 2020-05-12 | 33 | 项目经理 | 8h | 400 |
| 35 | 2.7.3 | 制定风险规避计划 | manual | 1d | 2020-05-13 | 2020-05-13 | 34 | 项目经理 | 8h | 400 |
| 36 | 2.8 | 规划整合 | manual | 1d? | 2020-05-14 | 2020-05-14 | 35 | 项目经理 | 8h | 400 |
| 37 | 3 | **执行与监控** |  | 55d | 2020-05-16 | 2020-07-30 |  |  | 485h | 17,950 |
| 38 | 3.1 | 组建项目团队 | manual | 1d | 2020-05-15 | 2020-05-15 | 36 | 测试员; 产品经理; 程序员1; 程序员2; 程序员3 | 26h | 940 |
| 39 | 3.2 | **项目执行** |  | 30d | 2020-05-18 | 2020-06-29 |  |  | 191h | 5,730 |
| 40 | 3.2.1 | **买家模块** |  | 11d | 2020-05-18 | 2020-06-02 |  |  | 88h | 2,640 |
| 41 | 3.2.1.1 | 注册登录 | manual | 1d | 2020-05-18 | 2020-05-19 | 38 | 程序员1 | 8h | 240 |
| 42 | 3.2.1.2 | 首页浏览 | manual | 1d | 2020-05-19 | 2020-05-20 | 38 | 程序员1 | 8h | 240 |
| 43 | 3.2.1.3 | 搜索菜谱 | manual | 1d | 2020-05-20 | 2020-05-21 | 38 | 程序员1 | 8h | 240 |
| 44 | 3.2.1.4 | 查看菜谱详情 | manual | 1d | 2020-05-21 | 2020-05-22 | 38 | 程序员1 | 8h | 240 |
| 45 | 3.2.1.5 | 浏览菜品 | manual | 1d | 2020-05-22 | 2020-05-25 | 38 | 程序员1 | 8h | 240 |
| 46 | 3.2.1.6 | 添加购物车 | manual | 1d | 2020-05-25 | 2020-05-26 | 41 | 程序员1 | 8h | 240 |
| 47 | 3.2.1.7 | 添加地址 | manual | 1d | 2020-05-26 | 2020-05-27 | 41 | 程序员1 | 8h | 240 |
| 48 | 3.2.1.8 | 下单 | manual | 1d | 2020-05-27 | 2020-05-28 | 41 | 程序员1 | 8h | 240 |
| 49 | 3.2.1.9 | 更改个人信息 | manual | 1d | 2020-05-28 | 2020-05-29 | 41 | 程序员1 | 8h | 240 |
| 50 | 3.2.1.10 | 菜谱上传 | manual | 1d | 2020-05-29 | 2020-06-01 | 41 | 程序员1 | 8h | 240 |
| 51 | 3.2.1.11 | 浏览社区 | manual | 1d | 2020-06-01 | 2020-06-02 | 41 | 程序员1 | 8h | 240 |

| ID | WBS | Task | Type | Duration | Start | Finish | Predecessors | Total slack | Free slack | Resources | Work | Cost |
| --- | --- | --- | --- | --- | --- | --- | --- | --- | --- | --- | --- | --- |
| 52 | 3.2.2 | **卖家模块** |  | 7d | 2020-05-18 | 2020-05-27 |  |  |  |  | 56h | 1,680 |
| 53 | 3.2.2.1 | 注册登录 | manual | 1d | 2020-05-18 | 2020-05-19 | 36 |  |  | 程序员2 | 8h | 240 |
| 54 | 3.2.2.2 | 注册商店 | manual | 1d | 2020-05-19 | 2020-05-20 | 53 |  |  | 程序员2 | 8h | 240 |
| 55 | 3.2.2.3 | 添加菜品 | manual | 2d | 2020-05-20 | 2020-05-22 | 54 |  |  | 程序员2 | 16h | 480 |
| 56 | 3.2.2.4 | 更改菜品信息 | manual | 1d | 2020-05-25 | 2020-05-26 | 55 |  |  | 程序员2 | 8h | 240 |
| 57 | 3.2.2.5 | 查看订单 | manual | 1d | 2020-05-26 | 2020-05-27 | 53 |  |  | 程序员2 | 8h | 240 |
| 58 | 3.2.2.6 | 订单处理 | manual | 1d | 2020-05-22 | 2020-05-25 | 53 |  |  | 程序员2 | 8h | 240 |
| 59 | 3.2.3 | **管理员模块** |  | 9d | 2020-05-18 | 2020-05-29 |  |  |  |  | 47h | 1,410 |
| 60 | 3.2.3.1 | 验证商家信息 | manual | 1d | 2020-05-20 | 2020-05-21 | 54 |  |  | 程序员3 | 8h | 240 |
| 61 | 3.2.3.2 | 更新首页推荐 | manual | 2d | 2020-05-19 | 2020-05-22 | 36 |  |  | 程序员3 | 16h | 480 |
| 62 | 3.2.3.3 | 更新菜谱信息 | manual | 1d | 2020-05-18 | 2020-05-19 | 36 |  |  | 程序员3 | 8h | 240 |
| 63 | 3.2.3.4 | 用户数据备份 | manual | 1.88d | 2020-05-26 | 2020-05-27 | 41, 53 |  |  | 程序员3 | 15h | 450 |
| 64 | 3.3 | **项目监控** |  | 33.12d | 2020-05-18 | 2020-07-01 |  |  |  |  | 87h | 3,480 |
| 65 | 3.3.1 | 各项指标监控 |  | 1.12d | 2020-05-18 | 2020-05-19 | 38 | 27.88d | 0d | UI专家; 测试员; 产品经理; 项目经理 | 32h | 1,280 |
| 66 | 3.3.2 | 监控评审 |  | 0.25d | 2020-05-20 | 2020-05-21 | 65 | 27.88d | 0d | UI专家; 测试员; 产品经理; 项目经理; 技术专家 | 5h | 200 |
| 67 | 3.3.3 | 变更评审 |  | 1.12d | 2020-05-21 | 2020-05-25 | 66 | 27.88d |  | UI专家; 测试员; 产品经理; 项目经理; 技术专家 | 45h | 1,800 |
| 68 | 3.3.4 | 例会 |  | 0.12d | 2020-05-18 | 2020-05-18 | 38 | 32d |  | UI专家; 测试员; 产品经理; 项目经理; 技术专家 | 5h | 200 |
| 69 | 3.4 | **管理干系人** |  | 9d | 2020-06-22 | 2020-07-02 |  |  |  |  | 56h | 2,800 |
| 70 | 3.4.1 | 发布项目信息 | manual | 1d | 2020-06-25 | 2020-06-26 | 38 |  |  | 产品经理; 项目经理 | 16h | 800 |
| 71 | 3.4.2 | 报告监控指标 | manual | 1d | 2020-07-02 | 2020-07-02 | 38 |  |  | 产品经理 | 8h | 400 |
| 72 | 3.4.3 | 干系人沟通 | manual | 2d | 2020-06-24 | 2020-06-26 | 38 |  |  | 产品经理; 项目经理 | 32h | 1,600 |
| 73 | 3.5 | **团队建设** |  | 7d | 2020-06-19 | 2020-06-29 |  |  |  |  | 120h | 4,800 |
| 74 | 3.5.1 | 培训 | manual | 3.75d | 2020-06-19 | 2020-06-29 | 38 |  |  | 产品经理; 技术专家; UI专家; 测试员; 项目经理 | 115h | 4,600 |
| 75 | 3.5.2 | 例会沟通 | manual | 0.12d | 2020-06-16 | 2020-06-17 | 38 |  |  | UI专家; 测试员; 产品经理; 技术专家; 项目经理 | 5h | 200 |
| 76 | 3.6 | 项目验收 | manual | 0.12d | 2020-06-18 | 2020-06-19 | 38 |  |  | UI专家; 测试员; 产品经理; 技术专家; 项目经理 | 5h | 200 |

| ID | WBS | Task | Type | Duration | Start | Finish | Predecessors | Total slack | Resources | Work | Cost |
| --- | --- | --- | --- | --- | --- | --- | --- | --- | --- | --- | --- |
| 77 | 4 | **收尾** |  | 19.12d | 2020-06-22 | 2020-07-17 |  | 0d |  | 75h | 3,000 |
| 78 | 4.1 | 项目终验 | manual | 0.88d | 2020-06-22 | 2020-06-23 | 76 |  | UI专家; 测试员; 产品经理; 技术专家; 项目经理 | 35h | 1,400 |
| 79 | 4.2 | 项目收尾 | manual | 1d | 2020-07-15 | 2020-07-17 | 78 |  | UI专家; 测试员; 产品经理; 技术专家; 项目经理 | 40h | 1,600 |
