# 餐谋长时间规划(1)

Schedule from MS Project, 2020-04-01 to 2020-07-13, costs in ¥.
Microsoft

## Calendars

- 标准: Mon-Fri 08:00-12:00, 13:00-17:00; Sat-Sun off. Exceptions (off unless hours are given): 2020-05-02 08:00-12:00, 13:00-17:00, 2020-06-06 08:00-12:00, 13:00-17:00.

## Resources

| Resource | Rate |
| --- | --- |
| 项目经理 | 150 |
| 产品经理 | 120 |
| 技术专家 | 110 |
| UI专家 | 110 |
| 测试员 | 100 |
| 程序员1 | 110 |
| 程序员2 | 110 |
| 程序员3 | 110 |
| 需求专家 | 100 |
| 设计专家 | 110 |
| 质量专家 | 100 |

## Schedule

| ID | WBS | Task | Duration | Start | Finish | Predecessors | Total slack | Free slack | Constraint | Resources | Work | Cost |
| --- | --- | --- | --- | --- | --- | --- | --- | --- | --- | --- | --- | --- |
| 1 | 1 | **启动** | 5d? | 2020-04-01 | 2020-04-08 |  | 15.5d |  |  |  | 135h | 16,010 |
| 2 | 1.1 | 组建核心团队 | 1d | 2020-04-01 | 2020-04-02 |  | 17.5d | 2d |  | 项目经理; UI专家; 质量专家; 需求专家; 设计专家 | 40h | 4,560 |
| 3 | 1.2 | 干系人分析 | 1d | 2020-04-02 | 2020-04-03 |  | 16.5d | 1d |  | 项目经理 | 8h | 1,200 |
| 4 | 1.3 | 里程碑计划 | 1d? | 2020-04-03 | 2020-04-06 |  | 15.5d | 0d |  | 项目经理 | 8h | 1,200 |
| 5 | 1.4 | 制定项目章程 | 1d? | 2020-04-06 | 2020-04-07 | 2, 3, 4 | 15.5d | 0d |  | 项目经理 | 8h | 1,200 |
| 6 | 1.5 | 项目启动大会 | 1d | 2020-04-07 | 2020-04-08 | 5 | 15.5d | 0d |  | UI专家; 测试员; 项目经理; 程序员1; 程序员2; 程序员3; 需求专家; 设计专家; 质量专家 | 71h | 7,850 |
| 7 | 2 | **规划** | 21.75d? | 2020-04-08 | 2020-05-06 |  | 15.5d |  |  |  | 192h | 26,640 |
| 8 | 2.1 | **规划范围** | 6.75d | 2020-04-08 | 2020-04-16 |  | 15.5d |  |  |  | 56h | 7,040 |
| 9 | 2.1.1 | 制定需求说明书 | 1d | 2020-04-08 | 2020-04-09 | 6 | 15.5d | 0d |  | 需求专家 | 8h | 800 |
| 10 | 2.1.2 | 界面设计 | 1d | 2020-04-09 | 2020-04-10 | 9 | 15.62d | 0.12d |  | UI专家 | 8h | 880 |
| 11 | 2.1.3 | 详细设计说明书 | 2d | 2020-04-09 | 2020-04-13 | 9 | 15.5d | 0d |  | 设计专家 | 16h | 1,760 |
| 12 | 2.1.4 | 范围说明书 | 1d | 2020-04-09 | 2020-04-10 | 9 | 15.62d | 0.12d |  | 项目经理 | 8h | 1,200 |
| 13 | 2.1.5 | 创建WBS | 1d | 2020-04-13 | 2020-04-14 | 10, 11, 12 | 15.5d | 0d |  | 项目经理 | 8h | 1,200 |
| 14 | 2.1.6 | 形成范围基准 | 1d | 2020-04-15 | 2020-04-16 | 13 | 15.5d | 0d |  | 项目经理 | 8h | 1,200 |
| 15 | 2.2 | **规划时间** | 6d | 2020-04-16 | 2020-04-24 |  | 15.5d | 4.25d |  |  | 40h | 6,000 |
| 16 | 2.2.1 | 排列工作包顺序 | 2d | 2020-04-16 | 2020-04-20 | 14 | 15.5d | 0d |  | 项目经理 | 16h | 2,400 |
| 17 | 2.2.2 | 估算资源 | 1d | 2020-04-20 | 2020-04-21 | 16 | 15.5d | 0d |  | 项目经理 | 8h | 1,200 |
| 18 | 2.2.3 | 估算项目持续时间 | 1d | 2020-04-21 | 2020-04-22 | 17 | 17.5d | 0d |  | 项目经理 | 8h | 1,200 |
| 19 | 2.2.4 | 制定进度计划 | 1d | 2020-04-22 | 2020-04-23 | 18 | 17.5d | 0d |  | 项目经理 | 8h | 1,200 |
| 20 | 2.2.5 | 形成进度基准 | 1d | 2020-04-23 | 2020-04-24 | 19 | 17.5d | 0d |  |  |  |  |
| 21 | 2.3 | **规划成本** | 4.25d | 2020-04-24 | 2020-05-01 |  | 16.25d | 0d |  |  | 24h | 3,600 |
| 22 | 2.3.1 | 项目成本估算 | 1d | 2020-04-24 | 2020-04-27 | 20 | 17.5d | 1.25d |  | 项目经理 | 8h | 1,200 |
| 23 | 2.3.2 | 项目预算 | 1d | 2020-04-29 | 2020-04-30 | 22 | 16.25d | 0d | start no earlier than 2020-04-29 | 项目经理 | 8h | 1,200 |
| 24 | 2.3.3 | 形成范围基准 | 1d | 2020-04-30 | 2020-05-01 | 23 | 16.25d |  |  | 项目经理 | 8h | 1,200 |

| ID | WBS | Task | Duration | Start | Finish | Predecessors | Total slack | Free slack | Constraint | Resources | Work | Cost |
| --- | --- | --- | --- | --- | --- | --- | --- | --- | --- | --- | --- | --- |
| 25 | 2.4 | **规划质量** | 2d | 2020-04-16 | 2020-04-20 |  | 24.5d | 8.25d |  |  | 16h | 1,600 |
| 26 | 2.4.1 | 制定测试计划 | 1d | 2020-04-16 | 2020-04-17 | 14 | 24.5d | 0d |  | 质量专家 | 8h | 800 |
| 27 | 2.4.2 | 制定测试用例 | 1d | 2020-04-17 | 2020-04-20 | 26 | 24.5d |  |  | 质量专家 | 8h | 800 |
| 28 | 2.5 | **规划人力资源** | 3d | 2020-04-23 | 2020-04-28 |  | 15.5d | 2.25d |  |  | 16h | 2,400 |
| 29 | 2.5.1 | 制定人力资源计划 | 1d | 2020-04-23 | 2020-04-24 | 17 | 15.5d | 0d |  | 项目经理 | 8h | 1,200 |
| 30 | 2.5.2 | 制定人员安排 | 1d | 2020-04-27 | 2020-04-28 | 29 | 15.5d | 0d |  | 项目经理 | 8h | 1,200 |
| 31 | 2.6 | **规划沟通** | 7d | 2020-04-28 | 2020-05-06 |  | 15.5d |  |  |  | 8h | 1,200 |
| 32 | 2.6.1 | 制定沟通计划 | 1d | 2020-04-28 | 2020-05-06 | 30 | 15.5d |  |  | 项目经理 | 8h | 1,200 |
| 33 | 2.7 | **规划风险** | 3d | 2020-05-01 | 2020-05-05 |  | 16.25d |  |  |  | 24h | 3,600 |
| 34 | 2.7.1 | 制定风险分析 | 1d | 2020-05-01 | 2020-05-02 | 28, 25, 21, 15 | 16.25d | 0d |  | 项目经理 | 8h | 1,200 |
| 35 | 2.7.2 | 制定风险登记册 | 1d | 2020-05-02 | 2020-05-04 | 34 | 16.25d | 0d |  | 项目经理 | 8h | 1,200 |
| 36 | 2.7.3 | 制定风险规避计划 | 1d | 2020-05-04 | 2020-05-05 | 35 | 16.25d | 0d |  | 项目经理 | 8h | 1,200 |
| 37 | 2.8 | 规划整合 | 1d? | 2020-05-05 | 2020-05-06 | 36 | 16.25d |  |  | 项目经理 | 8h | 1,200 |
| 38 | 3 | **执行与监控** | 23.88d | 2020-05-06 | 2020-06-06 |  |  |  |  |  | 490h | 54,440 |
| 39 | 3.1 | 组建项目团队 | 1d | 2020-06-06 | 2020-06-06 | 7 | -6.62d | 0d | finish no earlier than 2020-06-06 | 程序员3; 测试员; 程序员2; 程序员1; 项目经理 | 40h | 4,640 |
| 40 | 3.2 | **项目执行** | 14.25d | 2020-06-08 | 2020-06-26 |  |  |  |  |  | 248h | 27,280 |
| 41 | 3.2.1 | **买家模块** | 20d | 2020-06-08 | 2020-07-06 |  | -6.75d | 0d |  |  | 136h | 14,960 |
| 42 | 3.2.1.1 | 注册登录 | 1d | 2020-06-08 | 2020-06-09 | 39 | -6.75d | 0d |  | 程序员1 | 8h | 880 |
| 43 | 3.2.1.2 | 首页浏览 | 1d | 2020-06-09 | 2020-06-10 | 42 | 0d |  |  | 程序员1 | 8h | 880 |
| 44 | 3.2.1.3 | 搜索菜谱 | 2d | 2020-06-10 | 2020-06-15 | 43 | 0d |  |  | 程序员1 | 16h | 1,760 |
| 45 | 3.2.1.4 | 浏览菜谱 | 1d | 2020-06-15 | 2020-06-16 | 44SS | 0d |  |  | 程序员1 | 8h | 880 |
| 46 | 3.2.1.5 | 浏览菜品 | 3d | 2020-06-16 | 2020-06-19 | 45FF | 0d |  |  | 程序员1 | 24h | 2,640 |
| 47 | 3.2.1.6 | 添加购物车 | 3d | 2020-06-19 | 2020-06-24 | 46 | 0d |  |  | 程序员1 | 24h | 2,640 |
| 48 | 3.2.1.7 | 添加收货地址 | 1d | 2020-06-24 | 2020-06-25 | 47FF | 0.25d | 0d | start no earlier than 2020-06-21 | 程序员1 | 8h | 880 |
| 49 | 3.2.1.8 | 下单 | 1d | 2020-06-25 | 2020-06-26 | 48 | 0.25d |  |  | 程序员1 | 8h | 880 |
| 50 | 3.2.1.9 | 更改个人信息 | 1d | 2020-06-29 | 2020-06-30 | 42 | -1.75d | 0d | start no earlier than 2020-06-29 | 程序员1 | 8h | 880 |
| 51 | 3.2.1.10 | 菜谱上传 | 2d | 2020-06-26 | 2020-07-02 | 42 | -3.75d | 0d |  | 程序员1 | 16h | 1,760 |
| 52 | 3.2.1.11 | 浏览社区空间 | 1d | 2020-07-03 | 2020-07-06 | 42 | -5.75d | 0d |  | 程序员1 | 8h | 880 |

| ID | WBS | Task | Duration | Start | Finish | Predecessors | Total slack | Free slack | Constraint | Resources | Work | Cost |
| --- | --- | --- | --- | --- | --- | --- | --- | --- | --- | --- | --- | --- |
| 53 | 3.2.2 | **卖家模块** | 12d | 2020-06-08 | 2020-06-24 |  | 2.25d |  |  |  | 80h | 8,800 |
| 54 | 3.2.2.1 | 注册登录 | 1d | 2020-06-08 | 2020-06-09 | 39 | 4.25d | 0d |  | 程序员2 | 8h | 880 |
| 55 | 3.2.2.2 | 注册商店 | 2d | 2020-06-09 | 2020-06-11 | 54 | 4.25d | 0d |  | 程序员2 | 16h | 1,760 |
| 56 | 3.2.2.3 | 添加菜品 | 1d | 2020-06-15 | 2020-06-16 | 55 | 6.25d | 0d |  | 程序员2 | 8h | 880 |
| 57 | 3.2.2.4 | 更改菜品信息 | 2d | 2020-06-16 | 2020-06-18 | 56 | 6.25d |  |  | 程序员2 | 16h | 1,760 |
| 58 | 3.2.2.5 | 查看订单 | 1d | 2020-06-12 | 2020-06-15 | 55SS | 4.25d | 0d |  | 程序员2 | 8h | 880 |
| 59 | 3.2.2.6 | 订单处理 | 3d | 2020-06-19 | 2020-06-24 | 58 | 2.25d |  |  | 程序员2 | 24h | 2,640 |
| 60 | 3.2.3 | **管理员模块** | 6d | 2020-06-08 | 2020-06-16 |  | 8.25d |  |  |  | 32h | 3,520 |
| 61 | 3.2.3.1 | 验证商家信息 | 1d | 2020-06-15 | 2020-06-16 | 55 | 8.25d |  |  | 程序员3 | 8h | 880 |
| 62 | 3.2.3.2 | 更新首页推荐 | 1d | 2020-06-08 | 2020-06-09 | 39 | 13.25d |  |  | 程序员3 | 8h | 880 |
| 63 | 3.2.3.3 | 更新菜谱信息 | 1d | 2020-06-12 | 2020-06-15 | 39 | 9.25d |  |  | 程序员3 | 8h | 880 |
| 64 | 3.2.3.4 | 用户数据备份 | 1d | 2020-06-09 | 2020-06-10 | 42, 54 | 12.25d |  |  | 程序员3 | 8h | 880 |
| 65 | 3.3 | **项目监控** | 4.12d | 2020-06-08 | 2020-06-12 |  | -4.12d | 0d |  |  | 101h | 10,680 |
| 66 | 3.3.1 | 各项指标监控 | 1d | 2020-06-08 | 2020-06-08 | 39 | -3d | 0d |  | 测试员; 需求专家; 项目经理; 质量专家 | 18h | 1,850 |
| 67 | 3.3.2 | 监控评审 | 1d | 2020-06-08 | 2020-06-09 | 66 | -3d | 0d |  | 测试员; 设计专家; 项目经理; UI专家; 需求专家; 质量专家 | 33h | 3,460 |
| 68 | 3.3.3 | 变更评审 | 1d | 2020-06-10 | 2020-06-10 | 67 | -3d | 0d |  | 测试员; 需求专家; 项目经理; UI专家 | 18h | 1,930 |
| 69 | 3.3.4 | 例会 | 1d | 2020-06-11 | 2020-06-12 | 39 | -4.12d | 0d | start no earlier than 2020-06-11 | 测试员; 程序员2; 项目经理; 程序员1; 程序员3; 需求专家 | 32h | 3,440 |
| 70 | 3.4 | **管理干系人** | 10d | 2020-06-11 | 2020-06-24 |  |  |  |  |  | 24h | 3,600 |
| 71 | 3.4.1 | 发布项目信息 | 1d | 2020-06-11 | 2020-06-12 | 39 | 8.88d |  |  | 项目经理 | 8h | 1,200 |
| 72 | 3.4.2 | 报告监控指标 | 1d | 2020-06-12 | 2020-06-15 | 39 | 7.88d |  |  | 项目经理 | 8h | 1,200 |
| 73 | 3.4.3 | 干系人沟通 | 1d | 2020-06-23 | 2020-06-24 | 39 | 13d |  | start no earlier than 2020-06-23 | 项目经理 | 8h | 1,200 |
| 74 | 3.5 | **团队建设** | 3d | 2020-06-26 | 2020-06-30 |  |  |  |  |  | 59h | 6,300 |
| 75 | 3.5.1 | 培训 | 1d | 2020-06-26 | 2020-06-29 | 39 | 1.88d |  |  | 需求专家; 设计专家; UI专家; 测试员; 程序员1; 程序员2; 程序员3; 项目经理 | 17h | 1,800 |
| 76 | 3.5.2 | 例会沟通 | 1d | 2020-06-30 | 2020-07-01 | 39 | 8d |  | start no earlier than 2020-06-30 | UI专家; 测试员; 设计专家; 项目经理; 程序员1; 程序员2; 程序员3; 需求专家; 质量专家 | 42h | 4,500 |
| 77 | 3.6 | 项目验收 | 1d | 2020-06-29 | 2020-06-30 | 39 | 7d |  | start no earlier than 2020-06-29 | UI专家; 需求专家; 设计专家; 项目经理; 质量专家 | 18h | 1,940 |

| ID | WBS | Task | Duration | Start | Finish | Predecessors | Total slack | Resources | Work | Cost |
| --- | --- | --- | --- | --- | --- | --- | --- | --- | --- | --- |
| 78 | 4 | **收尾** | 2d | 2020-07-09 | 2020-07-13 |  |  |  | 33h | 3,540 |
| 79 | 4.1 | 项目终验 | 1d | 2020-07-09 | 2020-07-10 | 77 | 0d | UI专家; 需求专家; 设计专家; 项目经理; 质量专家 | 18h | 1,960 |
| 80 | 4.2 | 项目收尾 | 1d | 2020-07-10 | 2020-07-13 | 79 | 0d | UI专家; 测试员; 质量专家; 项目经理 | 15h | 1,580 |
